How a schedule from MS Project changed from version to version. A marks actual dates.

## Version 1 (saved 2024-11-12)

Note of the change: creado

| ID | WBS | Task | Duration | Start | Finish | Predecessors | Complete | Total float |
| --- | --- | --- | --- | --- | --- | --- | --- | --- |
| 1 | 1 | **Proyecto** | 282d | 2024-11-08 A | 2025-12-08 |  | 15% | 0d |
| 2 | 1.1 | **ESTRUCTURAS, REVESTIMIENTOS, CUBIERTAS Y TERMINACIONES** | 147d | 2025-05-16 | 2025-12-08 |  |  | 0d |
| 3 |  | Estructura Metalica Montado y Pintado | 52d | 2025-05-16 | 2025-07-28 | 36 |  |  |
| 4 |  | Aislación | 32d | 2025-09-11 | 2025-10-24 | 5 |  |  |
| 5 |  | Divisiones interiores bodegas | 32d | 2025-07-29 | 2025-09-10 | 3 |  |  |
| 6 |  | Oficinas | 10d | 2025-10-27 | 2025-11-07 | 4 |  |  |
| 7 |  | Drenes (CuboDren) | 12d | 2025-11-10 | 2025-11-25 | 6 |  |  |
| 8 |  | Portones Bodegas | 6d | 2025-11-26 | 2025-12-03 | 7 |  |  |
| 9 |  | Puertas exteriores | 9d | 2025-11-26 | 2025-12-08 | 7 |  |  |
| 10 |  | Muros cortinas, ventanas y puertas vidriadas | 4d | 2025-07-29 | 2025-08-01 | 3 |  |  |
| 11 |  | Porteria Acogida, bicicletero y barrera acceso | 3d | 2025-07-29 | 2025-07-31 | 3 |  |  |
| 12 |  | Sala electrica | 3d | 2025-11-10 | 2025-11-12 | 11, 6 |  |  |
| 13 |  | Sala agua potable | 2d | 2025-11-10 | 2025-11-11 | 6 |  |  |
| 14 |  | Sala residuos | 2d | 2025-11-10 | 2025-11-11 | 6 |  |  |
| 15 |  | Cierre Perimetral Acmaford | 4d | 2025-08-01 | 2025-08-06 | 11 |  |  |
| 16 |  | Cierre perimetral Bulldog | 7d | 2025-08-07 | 2025-08-15 | 15 |  |  |
| 17 | 1.2 | **Movimientros de tierras, fundaciones y vialidad** | 145d | 2024-11-08 A | 2025-05-29 |  | 29% | 0d |
| 18 |  | Excavación en TCN Caminos | 1d | 2024-11-08 A | 2024-11-08 A |  | 100% |  |
| 19 |  | Excavación en TCN Bodegas | 26d | 2024-11-08 A | 2024-12-13 |  | 89% |  |
| 20 |  | Mejoramiento Fundaciones con integral natural (1,5 m.) | 35d | 2024-12-16 | 2025-01-31 | 19 |  |  |
| 21 |  | Mejoramiento Fundaciones con integral natural (0,5 m.) | 14d | 2025-02-03 | 2025-02-20 | 20 |  |  |
| 22 |  | Relleno Estructural bajo 2" (entre Fundaciones hasta Subrasante) | 2d | 2025-02-25 | 2025-02-26 | 23 |  |  |
| 23 |  | Relleno Estructural bajo 6" (entre Fundaciones hasta Subrasante) | 2d | 2025-02-21 | 2025-02-24 | 21 |  |  |
| 24 |  | Relleno Estructural bajo 2" Bodegas, Oficinas, VF | 3d | 2025-02-25 | 2025-02-27 | 23 |  |  |
| 25 |  | Terraplén caminos y areas de servicio | 11d | 2024-11-11 A | 2024-11-25 A | 18 | 100% |  |
| 26 |  | Terraplén bajo radier bodegas | 10d | 2025-02-28 | 2025-03-13 | 22, 24 |  |  |
| 27 |  | Preparación de la Subrasante Bodegas | 21d | 2025-03-14 | 2025-04-11 | 26 |  |  |
| 28 |  | Preparación de la Subrasante Caminos y Areas de Servicio | 13d | 2024-11-26 A | 2024-12-12 | 25 | 85% |  |
| 29 |  | Base Granular Caminos | 1d | 2024-12-13 | 2024-12-13 | 28 |  |  |
| 30 |  | Base Granular Bodegas | 1d | 2025-04-14 | 2025-04-14 | 27 |  |  |
| 31 |  | Hormigón G-25 radier (malla acma C-92) | 2d | 2025-05-15 | 2025-05-16 | 40 |  |  |
| 32 |  | Hormigón G-35 calles | 1d | 2024-12-16 | 2024-12-16 | 29 |  |  |
| 33 |  | Hormigón G-25 Fundaciones Zapatas Bodegas y Oficinas | 1d | 2025-05-05 | 2025-05-05 | 38 |  |  |
| 34 |  | Hormigón G-04 Emplantillado Fundaciones Galpones y Oficinas | 1d | 2025-04-15 | 2025-04-15 | 30 |  |  |
| 35 |  | Hormigón G-25 Vigas de Fundación Galpones y Oficinas | 1d | 2025-05-05 | 2025-05-05 | 38 |  |  |
| 36 |  | Hormigón G-25 Pedestales Galpones y Oficinas | 1d | 2025-05-15 | 2025-05-15 | 40 |  |  |
| 37 |  | Hormigón G-25 Muros Galpones y Oficinas | 1d | 2025-05-29 | 2025-05-29 | 41 |  |  |
| 38 |  | Enfierradura Fundaciones Zapatas Galpones y Oficinas | 13d | 2025-04-16 | 2025-05-02 | 34 |  |  |
| 39 |  | Enfierradura Vigas de Fundación Galpones y Oficinas | 4d | 2025-04-16 | 2025-04-21 | 34 |  |  |
| 40 |  | Enfierradura Pedestales Galpones y Oficinas | 7d | 2025-05-06 | 2025-05-14 | 33, 35 |  |  |
| 41 |  | Enfierradura Muros Galpones y Oficinas | 8d | 2025-05-19 | 2025-05-28 | 31 |  |  |
| 42 |  | Demolición de Aceras | 1d | 2024-11-11 A | 2024-11-11 A | 18 | 100% |  |
| 43 |  | Remoción de Soleras | 1d | 2024-11-11 A | 2024-11-11 A | 18 | 100% |  |
| 44 |  | Solera Tipo A | 7d | 2024-11-12 A | 2024-11-20 A | 43 | 100% |  |

## Version 2 (saved 2024-11-14)

Note of the change: avance

Last finish stays 2025-12-08. Complete tasks 5 → 32.

Changed:

| ID | Task | Start | Finish | Complete | Total float |
| --- | --- | --- | --- | --- | --- |
| 1 | **Proyecto** |  |  | 15% → 75% |  |
| 2 | **ESTRUCTURAS, REVESTIMIENTOS, CUBIERTAS Y TERMINACIONES** | 2025-05-16 A |  | 0% → 48% |  |
| 3 | Estructura Metalica Montado y Pintado | 2025-05-16 A | 2025-07-28 A | 0% → 100% |  |
| 5 | Divisiones interiores bodegas | 2025-07-29 A |  | 0% → 51% |  |
| 10 | Muros cortinas, ventanas y puertas vidriadas | 2025-07-29 A | 2025-08-01 A | 0% → 100% |  |
| 11 | Porteria Acogida, bicicletero y barrera acceso | 2025-07-29 A | 2025-07-31 A | 0% → 100% |  |
| 15 | Cierre Perimetral Acmaford | 2025-08-01 A | 2025-08-06 A | 0% → 100% |  |
| 16 | Cierre perimetral Bulldog | 2025-08-07 A | 2025-08-15 A | 0% → 100% |  |
| 17 | **Movimientros de tierras, fundaciones y vialidad** |  | 2025-05-29 A | 29% → 100% | 0d → none |
| 19 | Excavación en TCN Bodegas |  | 2024-12-13 A | 89% → 100% |  |
| 20 | Mejoramiento Fundaciones con integral natural (1,5 m.) | 2024-12-16 A | 2025-01-31 A | 0% → 100% |  |
| 21 | Mejoramiento Fundaciones con integral natural (0,5 m.) | 2025-02-03 A | 2025-02-20 A | 0% → 100% |  |
| 22 | Relleno Estructural bajo 2" (entre Fundaciones hasta Subrasante) | 2025-02-25 A | 2025-02-26 A | 0% → 100% |  |
| 23 | Relleno Estructural bajo 6" (entre Fundaciones hasta Subrasante) | 2025-02-21 A | 2025-02-24 A | 0% → 100% |  |
| 24 | Relleno Estructural bajo 2" Bodegas, Oficinas, VF | 2025-02-25 A | 2025-02-27 A | 0% → 100% |  |
| 26 | Terraplén bajo radier bodegas | 2025-02-28 A | 2025-03-13 A | 0% → 100% |  |
| 27 | Preparación de la Subrasante Bodegas | 2025-03-14 A | 2025-04-11 A | 0% → 100% |  |
| 28 | Preparación de la Subrasante Caminos y Areas de Servicio |  | 2024-12-12 A | 85% → 100% |  |
| 29 | Base Granular Caminos | 2024-12-13 A | 2024-12-13 A | 0% → 100% |  |
| 30 | Base Granular Bodegas | 2025-04-14 A | 2025-04-14 A | 0% → 100% |  |
| 31 | Hormigón G-25 radier (malla acma C-92) | 2025-05-15 A | 2025-05-16 A | 0% → 100% |  |
| 32 | Hormigón G-35 calles | 2024-12-16 A | 2024-12-16 A | 0% → 100% |  |
| 33 | Hormigón G-25 Fundaciones Zapatas Bodegas y Oficinas | 2025-05-05 A | 2025-05-05 A | 0% → 100% |  |
| 34 | Hormigón G-04 Emplantillado Fundaciones Galpones y Oficinas | 2025-04-15 A | 2025-04-15 A | 0% → 100% |  |
| 35 | Hormigón G-25 Vigas de Fundación Galpones y Oficinas | 2025-05-05 A | 2025-05-05 A | 0% → 100% |  |
| 36 | Hormigón G-25 Pedestales Galpones y Oficinas | 2025-05-15 A | 2025-05-15 A | 0% → 100% |  |
| 37 | Hormigón G-25 Muros Galpones y Oficinas | 2025-05-29 A | 2025-05-29 A | 0% → 100% |  |
| 38 | Enfierradura Fundaciones Zapatas Galpones y Oficinas | 2025-04-16 A | 2025-05-02 A | 0% → 100% |  |
| 39 | Enfierradura Vigas de Fundación Galpones y Oficinas | 2025-04-16 A | 2025-04-21 A | 0% → 100% |  |
| 40 | Enfierradura Pedestales Galpones y Oficinas | 2025-05-06 A | 2025-05-14 A | 0% → 100% |  |
| 41 | Enfierradura Muros Galpones y Oficinas | 2025-05-19 A | 2025-05-28 A | 0% → 100% |  |
